Schedule from MS Project, 2013-07-03 to 2013-09-30.
Siteview

## Calendars

- 标准: Mon-Fri 08:00-12:00, 13:00-17:00; Sat-Sun off.

## Resources

| Resource |
| --- |
| 未定 |
| 袁署 |
| 胡昕花 |
| 周志光 |
| 王莉 |
| 贾亚莉 |

## Schedule

| ID | WBS | Task | Duration | Start | Finish | Predecessors | Total slack | Free slack | Constraint | Resources | Work |
| --- | --- | --- | --- | --- | --- | --- | --- | --- | --- | --- | --- |
| 1 | 1 | 系统设计与总体框架 | 12d? | 2013-07-03 | 2013-07-18 |  | 52d |  | start no earlier than 2013-07-03 | 周志光 | 96h |
| 2 | 2 | **服务器软件信息服务** | 13d | 2013-07-23 | 2013-08-08 |  | 37d |  |  | 周志光 | 208h |
| 3 | 2.1 | 更新协议制定 | 4d | 2013-07-23 | 2013-07-26 |  | 37d |  |  | 周志光 | 32h |
| 4 | 2.2 | Gsoap接口 | 5d | 2013-07-29 | 2013-08-02 | 3 | 37d |  |  | 周志光 | 40h |
| 5 | 2.3 | 数据库接口 | 4d | 2013-08-05 | 2013-08-08 | 4 | 37d |  |  | 周志光 | 32h |
| 6 | 3 | **服务器后台管理** | 14d | 2013-07-23 | 2013-08-09 |  | 36d |  |  | 未定 | 200h |
| 7 | 3.1 | 数据库设计与接口 | 3d | 2013-07-23 | 2013-07-25 |  | 47d |  |  | 未定 | 24h |
| 8 | 3.2 | 新增 | 5d | 2013-07-31 | 2013-08-06 |  | 36d | 0d | finish no earlier than 2013-08-06 | 未定 | 40h |
| 9 | 3.3 | 修改 | 3d | 2013-08-07 | 2013-08-09 | 8 | 36d |  |  | 未定 | 24h |
| 10 | 4 | **后台扫描与服务** | 25d? | 2013-07-04 | 2013-08-07 |  | 38d |  |  | 袁署 | 424h |
| 11 | 4.1 | 数据库设计 | 3d | 2013-07-04 | 2013-07-08 |  | 53d | 0d | start no earlier than 2013-07-04 | 周志光 | 24h |
| 12 | 4.2 | 注册表扫描 | 2d | 2013-07-09 | 2013-07-10 | 11 | 53d | 0d |  | 周志光 | 16h |
| 13 | 4.3 | 修补软件安装路径 | 2d | 2013-07-11 | 2013-07-12 | 12 | 53d |  |  | 周志光 | 16h |
| 14 | 4.4 | 修补版本号 | 3d | 2013-07-15 | 2013-07-17 | 13 | 53d |  | start no earlier than 2013-07-04 | 周志光 | 24h |
| 15 | 4.5 | 修补安装文件大小 | 3d? | 2013-07-17 | 2013-07-19 |  | 51d |  | start no earlier than 2013-07-17 | 袁署 | 24h |
| 16 | 4.6 | Gsoap接口 | 10d? | 2013-07-25 | 2013-08-07 |  | 38d |  | start no earlier than 2013-07-25 | 袁署 | 80h |
| 17 | 4.7 | 软件信息服务更新 | 5d? | 2013-07-23 | 2013-07-29 |  | 45d |  |  | 周志光 | 40h |
| 18 | 5 | **应用客户端** | 42d? | 2013-07-04 | 2013-08-30 |  | 21d |  |  | 胡昕花 | 800h |
| 19 | 5.1 | 用户界面 | 10d? | 2013-07-04 | 2013-07-17 |  | 53d |  | start no earlier than 2013-07-04 | 胡昕花 | 80h |
| 20 | 5.2 | UI美化 | 15d? | 2013-07-23 | 2013-08-12 |  | 35d |  |  | 王莉 | 120h |
| 21 | 5.3 | 软件下载 | 5d | 2013-07-23 | 2013-07-29 |  | 41d | 0d |  | 胡昕花 | 40h |
| 22 | 5.4 | 更新 | 2d | 2013-07-30 | 2013-07-31 | 21 | 41d | 0d |  | 胡昕花 | 16h |
| 23 | 5.5 | 卸载 | 2d | 2013-08-01 | 2013-08-02 | 22 | 41d |  |  | 胡昕花 | 16h |
| 24 | 5.6 | 软件分类 | 1d? | 2013-07-23 | 2013-07-23 |  | 49d |  |  |  |  |
| 25 | 5.7 | 软件图标修补 | 5d? | 2013-07-29 | 2013-08-02 |  | 41d |  | start no earlier than 2013-07-29 | 周志光 | 40h |
| 26 | 5.8 | 客户端测试 | 9d? | 2013-08-20 | 2013-08-30 |  | 21d |  | start no earlier than 2013-08-20 | 胡昕花 | 72h |
| 27 | 5.9 | 系统测试 | 10d? | 2013-08-19 | 2013-08-30 |  | 21d |  | finish no earlier than 2013-08-30 | 贾亚莉 | 80h |
| 28 | 6 | 模糊匹配算法研究 | 20d? | 2013-09-03 | 2013-09-30 |  | 0d |  | start no earlier than 2013-09-03 | 周志光 | 160h |
| 29 | 7 | 多语言 | 20d | 2013-09-03 | 2013-09-30 |  | 0d |  | start no earlier than 2013-09-03 | 未定 | 160h |
| 30 | 8 | 蠕虫网页分析工具 | 21d | 2013-07-23 | 2013-09-30 |  | 0d |  | start no earlier than 2013-07-23 | 未定 | 168h |
